# ECE411_T10_Project_Schedule_v1

Schedule from MS Project, 2014-10-01 to 2014-12-12, A marks actual dates.

## Calendars

- Standard: Mon-Fri 08:00-12:00, 13:00-17:00; Sat-Sun off.

## Resources

| Resource |
| --- |
| Carmen |
| Deborah |
| Jeremiah |
| Nick |

## Schedule

| ID | WBS | Task | Type | Duration | Start | Finish | Predecessors | Complete | Constraint | Resources | Work | Actual work |
| --- | --- | --- | --- | --- | --- | --- | --- | --- | --- | --- | --- | --- |
| 1 | 1 | **Get Started and Select Project** |  | 9d | 2014-10-01 A | 2014-10-13 A |  | 100% |  |  | 432h | 432h |
| 2 | 1.1 | Project Begins | milestone | 0d | 2014-10-01 A | 2014-10-01 A |  | 100% |  |  |  |  |
| 3 | 1.2 | 1.1 Form team |  | 1d | 2014-10-01 A | 2014-10-01 A | 2 | 100% |  | Carmen; Deborah; Jeremiah; Nick | 32h | 32h |
| 4 | 1.3 | 1.2 Create team Github repository and Wiki |  | 2d | 2014-10-02 A | 2014-10-03 A | 3 | 100% |  | Deborah; Nick | 32h | 32h |
| 5 | 1.4 | 1.3 Explore diverse project ideas |  | 4d | 2014-10-01 A | 2014-10-06 A | 2 | 100% |  | Carmen; Deborah; Jeremiah; Nick | 128h | 128h |
| 6 | 1.5 | 1.4 Write preliminary project proposals (2 proposals/team member) |  | 3d | 2014-10-02 A | 2014-10-06 A | 3 | 100% |  | Carmen; Deborah; Jeremiah; Nick | 96h | 96h |
| 7 | 1.6 | 1.5 Make decision matrix template |  | 2d | 2014-10-03 A | 2014-10-07 A | 3 | 100% |  | Carmen | 16h | 16h |
| 8 | 1.7 | 1.6 Review all preliminary project proposals |  | 2d | 2014-10-07 A | 2014-10-08 A | 6, 4 | 100% |  | Carmen; Deborah; Jeremiah; Nick | 64h | 64h |
| 9 | 1.8 | 1.7 Enter proposals scores / Select Project |  | 2d | 2014-10-09 A | 2014-10-13 A | 8, 7 | 100% |  | Carmen; Deborah; Jeremiah; Nick | 64h | 64h |
| 10 | 1.9 | Team Formed and Project Selected | milestone | 0d | 2014-10-08 A | 2014-10-08 A | 3 | 100% | must finish on 2014-10-08 |  |  |  |
| 11 | 1.10 | Submit Decision Matrix to Instructor | milestone | 0d | 2014-10-13 A | 2014-10-13 A | 9 | 100% | must finish on 2014-10-13 |  |  |  |
| 12 | 2 | **Create Product Design Specifications** |  | 10.5d | 2014-10-13 A | 2014-10-27 A |  | 100% |  |  | 250h | 250h |
| 13 | 2.1 | 2.1 Research microcontroller interfaces |  | 2d | 2014-10-13 A | 2014-10-15 A | 9 | 100% |  | Carmen; Deborah; Jeremiah; Nick | 64h | 64h |
| 14 | 2.2 | 2.2 Research sensor options |  | 2d | 2014-10-13 A | 2014-10-15 A | 9 | 100% |  | Deborah | 16h | 16h |
| 15 | 2.3 | 2.3 Research actuators (LEDs) options |  | 2d | 2014-10-13 A | 2014-10-15 A | 9 | 100% |  | Carmen | 16h | 16h |
| 16 | 2.4 | 2.4 Research power options |  | 2d | 2014-10-13 A | 2014-10-15 A | 9 | 100% |  | Jeremiah | 16h | 16h |
| 17 | 2.5 | 2.5 Research options for audio circuit |  | 2d | 2014-10-13 A | 2014-10-15 A | 9 | 100% |  | Nick | 16h | 16h |
| 18 | 2.6 | 2.6 Select system interfaces and make block diagram |  | 2d | 2014-10-15 A | 2014-10-17 A | 13, 14, 15, 16, 17 | 100% |  | Carmen; Deborah; Jeremiah; Nick | 50h | 50h |
| 19 | 2.7 | 2.7 Write Product Design Specification document |  | 2d | 2014-10-17 A | 2014-10-21 A | 18 | 100% |  | Jeremiah | 16h | 16h |
| 20 | 2.8 | 2.8 Review Product Design Specification document |  | 3d | 2014-10-21 A | 2014-10-24 A | 19 | 100% |  | Carmen; Deborah; Jeremiah; Nick | 48h | 48h |
| 21 | 2.9 | 2.9 Revise Product Design Specification document |  | 1d | 2014-10-24 A | 2014-10-27 A | 20 | 100% |  | Jeremiah | 8h | 8h |
| 22 | 2.10 | Submit PDS document to instructor | milestone | 0d | 2014-10-27 A | 2014-10-27 A | 21 | 100% | must finish on 2014-10-27 |  |  |  |
| 23 | 3 | **Create Schematic** |  | 9.5d | 2014-10-17 A | 2014-10-30 A |  | 100% |  |  | 184h | 184h |
| 24 | 3.1 | 3.1 Select main components |  | 1d | 2014-10-17 A | 2014-10-20 A | 18 | 100% |  | Carmen; Deborah; Jeremiah; Nick | 32h | 32h |
| 25 | 3.2 | 3.2 Read MCU, sensor, LED controller and LED datasheets |  | 3d | 2014-10-20 A | 2014-10-23 A | 24 | 100% |  | Carmen; Deborah; Jeremiah; Nick | 96h | 96h |
| 26 | 3.3 | 3.3 Make preliminary schematic |  | 2d | 2014-10-23 A | 2014-10-27 A | 24, 25 | 100% |  | Nick | 16h | 16h |
| 27 | 3.4 | 3.4 Review schematic |  | 1d | 2014-10-27 A | 2014-10-28 A | 26 | 100% |  | Carmen; Deborah; Jeremiah; Nick | 24h | 24h |
| 28 | 3.5 | 3.5 Revise schematic (1) |  | 1d | 2014-10-28 A | 2014-10-29 A | 27 | 100% |  | Nick | 8h | 8h |
| 29 | 3.6 | Submit preliminary schematic to instructor (no ERC errors) | milestone | 0d | 2014-10-29 A | 2014-10-29 A | 28 | 100% | must finish on 2014-10-29 |  |  |  |
| 30 | 3.7 | 3.6 Revise schematic (2) |  | 1d | 2014-10-30 A | 2014-10-30 A | 29 | 100% |  | Nick | 8h | 8h |

| ID | WBS | Task | Type | Duration | Start | Finish | Predecessors | Complete | Total slack | Free slack | Constraint | Resources | Work | Actual work |
| --- | --- | --- | --- | --- | --- | --- | --- | --- | --- | --- | --- | --- | --- | --- |
| 31 | 4 | **Create Board Layout** |  | 7d | 2014-10-31 A | 2014-11-10 A |  | 100% |  |  |  |  | 120h | 120h |
| 32 | 4.1 | 4.1 Make preliminary layout |  | 3d | 2014-10-31 A | 2014-11-04 A | 30 | 100% |  |  |  | Nick | 24h | 24h |
| 33 | 4.2 | 4.2 Review and revise layout (1) |  | 1d | 2014-11-05 A | 2014-11-05 A | 32 | 100% |  |  |  | Carmen; Deborah; Jeremiah; Nick | 32h | 32h |
| 34 | 4.3 | Submit preliminary layout (no DRC errors) | milestone | 0d | 2014-11-05 A | 2014-11-05 A | 33 | 100% |  |  | must finish on 2014-11-05 |  |  |  |
| 35 | 4.4 | 4.3 Revise layout (2) |  | 3d | 2014-11-06 A | 2014-11-10 A | 34 | 100% |  |  |  | Nick | 24h | 24h |
| 36 | 4.5 | 4.4 Find BOM parts on Digikey and order components |  | 1d | 2014-11-05 A | 2014-11-05 A | 32 | 100% |  |  |  | Carmen | 8h | 8h |
| 37 | 4.6 | Digi-key components shipping |  | 1d | 2014-11-06 A | 2014-11-06 A | 36 | 100% |  |  | must finish on 2014-11-07 |  |  |  |
| 38 | 4.7 | 4.5 Print layout and overimpose real components / Review layout before submitting board to fab |  | 1d | 2014-11-07 A | 2014-11-07 A | 37 | 100% |  |  |  | Carmen; Deborah; Jeremiah; Nick | 32h | 32h |
| 39 | 4.8 | Upload board design to OSHPark | milestone | 0d | 2014-11-10 A | 2014-11-10 A | 30, 35, 38 | 100% |  |  | must finish on 2014-11-10 |  |  |  |
| 40 | 5 | **Create Sensors and Actuators Drivers** |  | 14d | 2014-11-11 | 2014-11-28 |  |  | 1d |  |  |  | 224h |  |
| 41 | 5.1 | 5.1 Research AVRlibc and build development environment on breadboard |  | 1d | 2014-11-11 | 2014-11-11 | 39 |  | 2d | 0d |  | Carmen; Deborah | 16h |  |
| 42 | 5.2 | 5.2 Research LED driver protocol |  | 1d | 2014-11-13 | 2014-11-13 | 39 |  | 3d | 1d |  | Carmen | 8h |  |
| 43 | 5.3 | 5.3 Research I2C protocol |  | 1d | 2014-11-12 | 2014-11-12 | 39 |  | 1d | 0d |  | Deborah | 8h |  |
| 44 | 5.4 | 5.4 Write simple LED program and download to MCU |  | 1d | 2014-11-12 | 2014-11-12 | 41 |  | 2d | 0d |  | Carmen | 8h |  |
| 45 | 5.5 | 5.5 Code MCU initialization |  | 1d | 2014-11-14 | 2014-11-14 | 44 |  | 2d | 0d |  | Carmen | 8h |  |
| 46 | 5.6 | 5.6 Code LED driver protocol |  | 4d | 2014-11-17 | 2014-11-20 | 45, 42 |  | 2d | 0d |  | Carmen | 32h |  |
| 47 | 5.7 | 5.7 Code sensor I2C driver |  | 4d | 2014-11-13 | 2014-11-18 | 43, 41 |  | 1d | 0d |  | Deborah | 32h |  |
| 48 | 5.8 | 5.8 Code sensor interrupt |  | 3d | 2014-11-19 | 2014-11-21 | 47 |  | 1d | 0d |  | Deborah | 24h |  |
| 49 | 5.9 | 5.9 Code MCU data processing |  | 1d | 2014-11-24 | 2014-11-24 | 46, 48 |  | 1d | 0d |  | Carmen; Deborah | 16h |  |
| 50 | 5.10 | 5.10 Code LED test sequence |  | 1d | 2014-11-21 | 2014-11-21 | 46 |  | 2d | 1d |  | Carmen | 8h |  |
| 51 | 5.11 | 5.11 Write test plan for LED driver code and data processing code |  | 1d | 2014-11-25 | 2014-11-25 | 50, 49 |  | 1d | 0d |  | Carmen | 8h |  |
| 52 | 5.12 | 5.12 Write test plan for sensor driver code and data processing code |  | 1d | 2014-11-25 | 2014-11-25 | 49 |  | 1d | 0d |  | Deborah | 8h |  |
| 53 | 5.13 | 5.13 Test and debug LED driver code and data processing code |  | 2d | 2014-11-26 | 2014-11-27 | 51 |  | 1d | 0d |  | Carmen | 16h |  |
| 54 | 5.14 | 5.14 Test and debug sensor driver code and data processing code |  | 2d | 2014-11-26 | 2014-11-27 | 52 |  | 1d | 0d |  | Deborah | 16h |  |
| 55 | 5.15 | 5.15 Combine MCU init, sensor, LED and data processing code |  | 1d | 2014-11-28 | 2014-11-28 | 53, 54 |  | 1d |  |  | Carmen; Deborah | 16h |  |

| ID | WBS | Task | Type | Duration | Start | Finish | Predecessors | Total slack | Constraint | Resources | Work |
| --- | --- | --- | --- | --- | --- | --- | --- | --- | --- | --- | --- |
| 56 | 6 | **Assemble and Test board** |  | 4d | 2014-11-17 | 2014-11-21 |  | 0d |  |  | 64h |
| 57 | 6.1 | Receive boards from OSHPark | milestone | 0d | 2014-11-17 | 2014-11-17 | 39 | 0d | must finish on 2014-11-17 |  |  |
| 58 | 6.2 | 6.1 Assemble all components for each subsytem (soldering) |  | 2d | 2014-11-18 | 2014-11-19 | 57 | 0d |  | Jeremiah; Nick | 32h |
| 59 | 6.3 | 6.2 Power subsystem: Test VCC at required points |  | 1d | 2014-11-20 | 2014-11-20 | 58 | 0d |  | Nick; Jeremiah | 16h |
| 60 | 6.4 | 6.3 Connectors/Headers/Switches: ensure test points are active |  | 1d | 2014-11-21 | 2014-11-21 | 59 | 6d |  | Jeremiah | 8h |
| 61 | 6.5 | 6.4 Crystal Xtal signal is verified at 8.192MHz |  | 1d | 2014-11-21 | 2014-11-21 | 59 | 0d |  | Nick | 8h |
| 62 | 7 | **Develop Firmware for Audio Circuit** |  | 6d | 2014-11-24 | 2014-12-01 |  | 0d |  |  | 64h |
| 63 | 7.1 | 7.1 Code "Hello world" program for audio test |  | 3d | 2014-11-24 | 2014-11-26 | 61 | 0d |  | Nick | 24h |
| 64 | 7.2 | 7.2 PWM audio: code function for each supported color |  | 1d | 2014-11-27 | 2014-11-27 | 63 | 0d |  | Nick | 8h |
| 65 | 7.3 | 7.3 PWM audio: code mainline for color sensor readings |  | 1d | 2014-11-28 | 2014-11-28 | 64 | 0d |  | Nick | 8h |
| 66 | 7.4 | 7.4 Peer review PWM code |  | 1d | 2014-12-01 | 2014-12-01 | 65 | 0d |  | Carmen; Deborah; Jeremiah | 24h |
| 67 | 8 | **Perform System Integration, Test and Verification** |  | 6d | 2014-12-02 | 2014-12-09 |  | 0d |  |  | 192h |
| 68 | 8.1 | 8.1 Design test cases for all subsystems |  | 2d | 2014-12-02 | 2014-12-03 | 66, 61, 60, 55 | 0d |  | Carmen; Deborah; Nick; Jeremiah | 64h |
| 69 | 8.2 | 8.2 Implement test cases for all subsystems |  | 2d | 2014-12-04 | 2014-12-05 | 68 | 0d |  | Carmen; Deborah; Jeremiah; Nick | 64h |
| 70 | 8.3 | 8.3 Buy / Build mirror frame and assemble product |  | 2d | 2014-12-08 | 2014-12-09 | 69 | 0d |  | Carmen; Deborah; Jeremiah; Nick | 64h |
| 71 | 9 | **Update Project Documentation** |  | 3d | 2014-12-10 | 2014-12-12 |  | 0d |  |  | 96h |
| 72 | 9.1 | 9.1 Draw L-0 block diagram of full system and subcomponents and L1 block diagram of full system |  | 3d | 2014-12-10 | 2014-12-12 | 70 | 0d |  | Nick | 24h |
| 73 | 9.2 | 9.2 Redefine project requirements, update PDS |  | 3d | 2014-12-10 | 2014-12-12 | 70, 72 | 0d |  | Jeremiah | 24h |
| 74 | 9.3 | 9.3 Create project report |  | 3d | 2014-12-10 | 2014-12-12 | 70, 73 | 0d |  | Deborah | 24h |
| 75 | 9.4 | 9.4 Create Project Presentation |  | 3d | 2014-12-10 | 2014-12-12 | 70, 73 | 0d |  | Carmen | 24h |
| 76 | 9.5 | Project Demo | milestone | 0d | 2014-12-12 | 2014-12-12 | 70, 74, 75, 69 | 0d | must finish on 2014-12-12 |  |  |
